# PeNcIL – Planirani raspored aktivnosti

Schedule from MS Project, 2017-10-17 to 2018-01-01, 4 hours a day.
SWETeam

## Calendars

- Standard: Mon-Sun 16:00-20:00.

## Resources

| Resource |
| --- |
| Architect |
| Architecture Reviewer |
| Business-Process Analyst |
| Business Designer |
| Business-Model Reviewer |
| Code Reviewer |
| Configuration Manager |
| Course Developer |
| Database Designer |
| Deployment Manager |
| Design Reviewer |
| Designer |
| Implementer |
| Integration Tester |
| Performance Tester |
| Process Engineer |
| Project Manager |
| Requirements Reviewer |
| Stakeholder |
| System Administrator |
| System Analyst |
| System Integrator |
| System Tester |
| Technical Writer |
| Test Designer |
| Tool Smith |
| Use-Case Author |
| User-Interface Designer |
| Melisa Hot |
| Samra Camić |

## Schedule

| ID | WBS | Task | Type | Duration | Start | Finish | Predecessors | Baseline start | Baseline finish | Baseline duration | Total slack | Free slack | Constraint | Resources | Work |
| --- | --- | --- | --- | --- | --- | --- | --- | --- | --- | --- | --- | --- | --- | --- | --- |
| 1 | 1 | **Očekivani rezultati** |  | 77d | 2017-10-17 | 2018-01-01 |  | 1998-06-11 | 1998-10-19 | 186d | 0d |  |  | Melisa Hot [50%]; Samra Camić [50%] | 308h |
| 2 | 1.1 | Početak projekta | milestone | 0d | 2017-10-17 | 2017-10-17 | 16SS | 1998-06-11 | 1998-06-11 | 0d | 77d |  | start no earlier than 2017-10-17 | Melisa Hot [50%]; Samra Camić [50%] |  |
| 3 | 1.2 | Vizija sistema | milestone | 0d | 2017-10-23 | 2017-10-23 | 19 | 1998-06-17 | 1998-06-17 | 0d | 70d |  |  | Melisa Hot [50%]; Samra Camić [50%] |  |
| 4 | 1.3 | Dokument o zahtevima | milestone | 0d | 2017-11-06 | 2017-11-06 | 25 |  |  |  | 56d |  |  | Melisa Hot [50%]; Samra Camić [50%] |  |
| 5 | 1.4 | Arhitekturni prototip | milestone | 0d | 2017-11-09 | 2017-11-09 | 26 |  |  |  | 53d |  |  | Melisa Hot [50%]; Samra Camić [50%] |  |
| 6 | 1.5 | Prototip korisničkog interfejsa | milestone | 0d | 2017-11-13 | 2017-11-13 | 28 |  |  |  | 49d |  |  | Melisa Hot [50%]; Samra Camić [50%] |  |
| 7 | 1.6 | Arhitekturni projekat | milestone | 0d | 2017-11-20 | 2017-11-20 | 29 | 1998-08-20 | 1998-08-20 | 0d | 42d |  |  | Melisa Hot [50%]; Samra Camić [50%] |  |
| 8 | 1.7 | Detaljni projekat | milestone | 0d | 2017-12-04 | 2017-12-04 | 33 | 1998-10-06 | 1998-10-06 | 0d | 28d |  |  | Melisa Hot [50%]; Samra Camić [50%] |  |
| 9 | 1.8 | Beta verzija | milestone | 0d | 2017-12-07 | 2017-12-07 | 34 | 1998-10-19 | 1998-10-19 | 0d | 25d |  |  | Melisa Hot [50%]; Samra Camić [50%] |  |
| 10 | 1.9 | Plan testiranja | milestone | 0d | 2017-12-11 | 2017-12-11 | 35 |  |  |  | 21d |  |  | Melisa Hot [50%]; Samra Camić [50%] |  |
| 11 | 1.10 | Izveštaj o testiranju | milestone | 0d | 2017-12-18 | 2017-12-18 | 41 |  |  |  | 14d |  |  | Melisa Hot [50%]; Samra Camić [50%] |  |
| 12 | 1.11 | Konačna verzija | milestone | 0d | 2017-12-18 | 2017-12-18 | 38 |  |  |  | 14d |  |  | Melisa Hot [50%]; Samra Camić [50%] |  |
| 13 | 1.12 | Korisničko uputstvo | milestone | 0d | 2017-12-31 | 2017-12-31 | 46 |  |  |  | 1d |  |  | Melisa Hot [50%]; Samra Camić [50%] |  |
| 14 | 1.13 | Prezentacija proizvoda | milestone | 0d | 2018-01-01 | 2018-01-01 | 44 |  |  |  | 0d |  |  | Melisa Hot [50%]; Samra Camić [50%] |  |
| 16 | 2 | **Faza planiranja projekta** |  | 14d | 2017-10-17 | 2017-10-30 |  | 1998-06-11 | 1998-06-17 | 10d | 0d |  |  | Melisa Hot [50%]; Samra Camić [50%] | 168h |
| 17 | 2.1 | **Preliminarna iteracija** |  | 14d | 2017-10-17 | 2017-10-30 |  | 1998-06-11 | 1998-06-17 | 10d | 0d |  |  | Melisa Hot [50%]; Samra Camić [50%] | 112h |
| 18 | 2.1.1 | Definisanje zahteva |  | 3d | 2017-10-17 | 2017-10-19 |  | 1998-06-11 | 1998-06-15 | 6d | 0d |  | start no earlier than 2017-10-17 | Melisa Hot [50%]; Samra Camić [50%] | 12h |
| 19 | 2.1.2 | Izrada vizije sistema |  | 4d | 2017-10-20 | 2017-10-23 | 18 | 1998-06-11 | 1998-06-17 | 10d | 0d |  |  | Melisa Hot [50%]; Samra Camić [50%] | 16h |
| 20 | 2.1.3 | Modelovanje domena |  | 1d | 2017-10-24 | 2017-10-24 | 19 | 1998-06-11 | 1998-06-17 | 10d | 0d |  |  | Melisa Hot [50%]; Samra Camić [50%] | 4h |
| 21 | 2.1.4 | Analiza slučajeva korišćenja |  | 6d | 2017-10-25 | 2017-10-30 | 20 | 1998-06-19 | 1998-06-23 | 6d | 0d |  |  | Melisa Hot [50%]; Samra Camić [50%] | 24h |
| 23 | 3 | **Faza razrade projekta** |  | 21d | 2017-10-31 | 2017-11-20 | 16 | 1998-06-18 | 1998-08-20 | 92d | 0d |  |  | Melisa Hot [50%]; Samra Camić [50%] | 280h |
| 24 | 3.1 | **Iteracija R1 - Razvoj arhitekturnog prototipa** |  | 21d | 2017-10-31 | 2017-11-20 |  | 1998-06-18 | 1998-07-20 | 46d | 0d |  |  | Melisa Hot [50%]; Samra Camić [50%] | 196h |
| 25 | 3.1.1 | Izrada dokumenta o zahtevima |  | 7d | 2017-10-31 | 2017-11-06 |  | 1998-06-19 | 1998-06-25 | 10d | 14d | 0d |  | Melisa Hot [50%]; Samra Camić [50%] | 28h |
| 26 | 3.1.2 | Implementacija arhitekturnog prototipa |  | 10d | 2017-10-31 | 2017-11-09 |  | 1998-07-01 | 1998-07-10 | 16d | 0d |  |  | Melisa Hot [50%]; Samra Camić [50%] | 40h |
| 27 | 3.1.3 | Testiranje arhitekture |  | 1d | 2017-11-10 | 2017-11-10 | 26 | 1998-07-08 | 1998-07-16 | 14d | 0d |  |  | Melisa Hot [50%]; Samra Camić [50%] | 4h |
| 28 | 3.1.4 | Implementacija prototipa korisničkog interfejsa |  | 3d | 2017-11-11 | 2017-11-13 | 27 | 1998-06-18 | 1998-07-20 | 46d | 0d |  |  | Melisa Hot [50%]; Samra Camić [50%] | 12h |
| 29 | 3.1.5 | Izrada arhitekturnog projekta |  | 7d | 2017-11-14 | 2017-11-20 | 28 | 1998-06-23 | 1998-07-06 | 20d | 0d |  |  | Melisa Hot [50%]; Samra Camić [50%] | 28h |

| ID | WBS | Task | Duration | Start | Finish | Predecessors | Baseline start | Baseline finish | Baseline duration | Total slack | Free slack | Resources | Work |
| --- | --- | --- | --- | --- | --- | --- | --- | --- | --- | --- | --- | --- | --- |
| 31 | 4 | **Faza izrade projekta** | 28d | 2017-11-21 | 2017-12-18 | 23 | 1998-08-21 | 1998-10-06 | 66d | 0d |  | Melisa Hot [50%]; Samra Camić [50%] | 404h |
| 32 | 4.1 | **Iteracija I1 - Razvoj beta verzije** | 23d | 2017-11-21 | 2017-12-13 |  | 1998-08-21 | 1998-09-04 | 22d | 0d |  | Melisa Hot [50%]; Samra Camić [50%] | 248h |
| 33 | 4.1.1 | Izrada detaljnog projekta | 14d | 2017-11-21 | 2017-12-04 |  |  |  |  | 9d | 0d | Melisa Hot [50%]; Samra Camić [50%] | 56h |
| 34 | 4.1.2 | Implementacija beta verzije | 17d | 2017-11-21 | 2017-12-07 |  | 1998-08-24 | 1998-08-31 | 12d | 0d |  | Melisa Hot [50%]; Samra Camić [50%] | 68h |
| 35 | 4.1.3 | Izrada plana testiranja | 4d | 2017-12-08 | 2017-12-11 | 34 |  |  |  | 0d |  | Melisa Hot [50%]; Samra Camić [50%] | 16h |
| 36 | 4.1.4 | Testiranje sistema | 2d | 2017-12-12 | 2017-12-13 | 35 | 1998-08-24 | 1998-09-02 | 16d | 0d |  | Melisa Hot [50%]; Samra Camić [50%] | 8h |
| 37 | 4.1.5 | Izrada izveštaja o testiranju | 2d | 2017-12-12 | 2017-12-13 | 35 | 1998-08-21 | 1998-09-04 | 22d | 0d |  | Melisa Hot [50%]; Samra Camić [50%] | 8h |
| 38 | 4.2 | **Iteracija I2 - Razvoj konačne verzije** | 5d | 2017-12-14 | 2017-12-18 | 32 | 1998-09-07 | 1998-09-21 | 22d | 0d |  | Melisa Hot [50%]; Samra Camić [50%] | 44h |
| 39 | 4.2.1 | Implementacija konačne verzije | 4d | 2017-12-14 | 2017-12-17 |  | 1998-09-08 | 1998-09-15 | 12d | 0d |  | Melisa Hot [50%]; Samra Camić [50%] | 16h |
| 40 | 4.2.2 | Testiranje konačne verzije | 1d | 2017-12-18 | 2017-12-18 | 39 | 1998-09-08 | 1998-09-17 | 16d | 0d |  | Melisa Hot [50%]; Samra Camić [50%] | 4h |
| 41 | 4.2.3 | Ažuriranje izveštaja o testiranju | 1d | 2017-12-18 | 2017-12-18 | 39 | 1998-09-07 | 1998-09-21 | 22d | 0d |  | Melisa Hot [50%]; Samra Camić [50%] | 4h |
| 43 | 5 | **Faza okončanja projekta** | 14d | 2017-12-19 | 2018-01-01 | 38 | 1998-10-07 | 1998-10-19 | 18d | 0d |  | Melisa Hot [50%]; Samra Camić [50%] | 168h |
| 44 | 5.1 | **Iteracija O1 - Instalacija sistema** | 14d | 2017-12-19 | 2018-01-01 |  | 1998-10-07 | 1998-10-19 | 18d | 0d |  | Melisa Hot [50%]; Samra Camić [50%] | 112h |
| 45 | 5.1.1 | Sređivanje projektne dokumentacije | 7d | 2017-12-19 | 2017-12-25 |  |  |  |  | 0d |  | Melisa Hot [50%]; Samra Camić [50%] | 28h |
| 46 | 5.1.2 | Izrada korisničkog uputstva | 6d | 2017-12-26 | 2017-12-31 | 45 | 1998-10-07 | 1998-10-19 | 18d | 0d |  | Melisa Hot [50%]; Samra Camić [50%] | 24h |
| 47 | 5.1.3 | Instalacija sistema | 1d | 2018-01-01 | 2018-01-01 | 46 |  |  |  | 0d |  | Melisa Hot [50%]; Samra Camić [50%] | 4h |
